region_id,region_name,task_name,start_date,end_date,status,priority_tier
Kalteng_Sabangau,Kalimantan Tengah (Taman Nasional Sebangau / Palangka Raya),Audit & Perbaikan Struktur Sekat Kanal Eksisting,2027-05-01,2027-06-30,Direncanakan,Tier 1 (Prioritas Kritis Ekstrem)
Kalteng_Sabangau,Kalimantan Tengah (Taman Nasional Sebangau / Palangka Raya),Survei ERT T0 Baseline (Kondisi Basah),2027-06-15,2027-06-30,Direncanakan,Tier 1 (Prioritas Kritis Ekstrem)
Kalteng_Sabangau,Kalimantan Tengah (Taman Nasional Sebangau / Palangka Raya),Penutupan Total Sekat Kanal (Full Impoundment),2027-07-01,2027-07-15,Wajib Selesai,Tier 1 (Prioritas Kritis Ekstrem)
Kalteng_Sabangau,Kalimantan Tengah (Taman Nasional Sebangau / Palangka Raya),Aktivasi Posko Darurat MPA & Patroli Rutin,2027-08-01,2027-12-10,Siaga Penuh,Tier 1 (Prioritas Kritis Ekstrem)
Kalteng_Sabangau,Kalimantan Tengah (Taman Nasional Sebangau / Palangka Raya),Survei ERT T1 Onset Penurunan Muka Air,2027-08-15,2027-08-25,Direncanakan,Tier 1 (Prioritas Kritis Ekstrem)
Kalteng_Sabangau,Kalimantan Tengah (Taman Nasional Sebangau / Palangka Raya),Survei ERT T2 Puncak Desaturasi Gambut,2027-10-20,2027-10-31,Direncanakan,Tier 1 (Prioritas Kritis Ekstrem)
Kalteng_Sabangau,Kalimantan Tengah (Taman Nasional Sebangau / Palangka Raya),Survei ERT T3 Evaluasi Pemulihan Pasca-Restorasi,2027-12-15,2027-12-25,Direncanakan,Tier 1 (Prioritas Kritis Ekstrem)
Kalsel_Pulang_Pisau,Kalimantan Selatan / Tengah (Kawasan Pulang Pisau - Kahayan),Audit & Perbaikan Struktur Sekat Kanal Eksisting,2027-05-01,2027-06-30,Direncanakan,Tier 1 (Prioritas Kritis Ekstrem)
Kalsel_Pulang_Pisau,Kalimantan Selatan / Tengah (Kawasan Pulang Pisau - Kahayan),Survei ERT T0 Baseline (Kondisi Basah),2027-06-15,2027-06-30,Direncanakan,Tier 1 (Prioritas Kritis Ekstrem)
Kalsel_Pulang_Pisau,Kalimantan Selatan / Tengah (Kawasan Pulang Pisau - Kahayan),Penutupan Total Sekat Kanal (Full Impoundment),2027-07-01,2027-07-15,Wajib Selesai,Tier 1 (Prioritas Kritis Ekstrem)
Kalsel_Pulang_Pisau,Kalimantan Selatan / Tengah (Kawasan Pulang Pisau - Kahayan),Aktivasi Posko Darurat MPA & Patroli Rutin,2027-08-01,2027-12-15,Siaga Penuh,Tier 1 (Prioritas Kritis Ekstrem)
Kalsel_Pulang_Pisau,Kalimantan Selatan / Tengah (Kawasan Pulang Pisau - Kahayan),Survei ERT T1 Onset Penurunan Muka Air,2027-08-15,2027-08-25,Direncanakan,Tier 1 (Prioritas Kritis Ekstrem)
Kalsel_Pulang_Pisau,Kalimantan Selatan / Tengah (Kawasan Pulang Pisau - Kahayan),Survei ERT T2 Puncak Desaturasi Gambut,2027-10-20,2027-10-31,Direncanakan,Tier 1 (Prioritas Kritis Ekstrem)
Kalsel_Pulang_Pisau,Kalimantan Selatan / Tengah (Kawasan Pulang Pisau - Kahayan),Survei ERT T3 Evaluasi Pemulihan Pasca-Restorasi,2027-12-15,2027-12-25,Direncanakan,Tier 1 (Prioritas Kritis Ekstrem)
Kaltim_Kutai_Kartanegara,Kalimantan Timur (Delta Mahakam / Kutai Kartanegara),Inspeksi Pintu Air Drainase Delta,2027-08-01,2027-09-15,Direncanakan,Tier 2 (Prioritas Siaga Tertunda / Delayed Peak)
Kaltim_Kutai_Kartanegara,Kalimantan Timur (Delta Mahakam / Kutai Kartanegara),Survei ERT Baseline & Uji Residu,2027-09-20,2027-09-30,Direncanakan,Tier 2 (Prioritas Siaga Tertunda / Delayed Peak)
Kaltim_Kutai_Kartanegara,Kalimantan Timur (Delta Mahakam / Kutai Kartanegara),Penutupan Pintu Sekat Drainase,2027-10-01,2027-10-15,Wajib Selesai,Tier 2 (Prioritas Siaga Tertunda / Delayed Peak)
Kaltim_Kutai_Kartanegara,Kalimantan Timur (Delta Mahakam / Kutai Kartanegara),Patroli Siaga Karhutla Delta Mahakam,2027-11-01,2027-12-05,Siaga,Tier 2 (Prioritas Siaga Tertunda / Delayed Peak)
Kaltim_Kutai_Kartanegara,Kalimantan Timur (Delta Mahakam / Kutai Kartanegara),Pembukaan Bertahap Pintu Air Pasca-Restorasi,2027-12-05,2027-12-15,Direncanakan,Tier 2 (Prioritas Siaga Tertunda / Delayed Peak)
Kalbar_Kubu_Raya,Kalimantan Barat (Kubu Raya / Rasau Jaya),Pemeliharaan Berkala Pintu Klep & Pengerukan Sedimen,2027-05-01,2027-06-30,Rutin,Tier 3 (Prioritas Pemeliharaan Rutin / Terlindung Hidrologis)
Kalbar_Kubu_Raya,Kalimantan Barat (Kubu Raya / Rasau Jaya),Kalibrasi Sensor Pasang Surut & Piezometer,2027-07-01,2027-07-20,Rutin,Tier 3 (Prioritas Pemeliharaan Rutin / Terlindung Hidrologis)
Kalbar_Kubu_Raya,Kalimantan Barat (Kubu Raya / Rasau Jaya),Inspeksi Lapangan Kondisi Basah Pesisir,2027-08-10,2027-08-25,Rutin,Tier 3 (Prioritas Pemeliharaan Rutin / Terlindung Hidrologis)
